# GAM

Schedule from GanttProject, 2012-03-13 to 2012-07-31.

## Calendars

- Project calendar: Mon-Fri working; Sat-Sun off.

## Resources

| Resource |
| --- |
| Analytik |
| Backend vývojár |
| Frontend vývojár |
| Projektový manažér |
| Tester |

## Schedule

| ID | Task | Type | Duration | Start | Finish | Predecessors | Resources |
| --- | --- | --- | --- | --- | --- | --- | --- |
| 1 | Zber používateľských požiadaviek |  | 5d | 2012-03-13 | 2012-03-19 |  | Analytik |
| 2 | Výber technológie - backend |  | 4d | 2012-03-20 | 2012-03-23 | 1 | Analytik [50%]; Backend vývojár; Projektový manažér [50%] |
| 3 | Výber technológie - frontend |  | 4d | 2012-03-20 | 2012-03-23 | 1 | Analytik [50%]; Projektový manažér [50%]; Frontend vývojár |
| 4 | Zoznámenie sa s projektom | milestone | 0d | 2012-03-26 | 2012-03-26 | 2, 3 | Analytik; Backend vývojár; Projektový manažér; Frontend vývojár; Tester |
| 5 | Prototyp |  | 9d | 2012-03-27 | 2012-04-06 | 2, 4 | Backend vývojár; Projektový manažér; Frontend vývojár |
| 6 | Výber požiadaviek pre release 0.1 |  | 3d | 2012-04-09 | 2012-04-11 | 5 |  |
| 7 | Návrh backendu |  | 6d | 2012-04-12 | 2012-04-19 | 6 | Backend vývojár |
| 8 | Návrh frontendu |  | 4d | 2012-04-12 | 2012-04-17 | 6 | Frontend vývojár |
| 9 | Začiatok implementácie | milestone | 0d | 2012-04-20 | 2012-04-20 | 7, 8 | Backend vývojár; Projektový manažér; Frontend vývojár |
| 10 | Implementácia backendu 0.1 |  | 13d | 2012-04-23 | 2012-05-09 | 9 | Backend vývojár |
| 11 | Implementácia frontendu 0.1 |  | 16d | 2012-04-23 | 2012-05-14 | 9 | Frontend vývojár |
| 12 | Testovanie 0.1 |  | 22d | 2012-04-25 | 2012-05-24 | 9 | Tester |
| 13 | Release 0.1 | milestone | 0d | 2012-05-25 | 2012-05-25 | 10, 11, 12 | Analytik; Projektový manažér |
| 14 | Výber požiadaviek pre release 0.2 |  | 4d | 2012-05-28 | 2012-05-31 | 13 |  |
| 15 | Implementácia backendu 0.2 |  | 20d | 2012-06-01 | 2012-06-28 | 14 | Backend vývojár |
| 16 | Implementácia frontendu 0.2 |  | 10d | 2012-06-01 | 2012-06-14 | 14 | Frontend vývojár |
| 17 | Testovanie 0.2 |  | 25d | 2012-06-04 | 2012-07-06 | 12, 14 | Tester |
| 18 | Skúšobná prevádzka |  | 10d | 2012-07-09 | 2012-07-20 | 15, 16, 17 | Analytik; Projektový manažér; Tester |
| 19 | Úpravy podľa skúšobnej prevádzky |  | 13d | 2012-07-11 | 2012-07-27 | 15, 16, 17 | Backend vývojár; Frontend vývojár |
| 20 | Testovanie úprav |  | 6d | 2012-07-23 | 2012-07-30 | 18 | Tester |
| 21 | Release 0.2 a nasadenie | milestone | 0d | 2012-07-31 | 2012-07-31 | 18, 19, 20 | Projektový manažér |
